# CRONOGRAMA

Schedule from MS Project, 2017-12-26 to 2018-06-25.
Microsoft

## Calendars

- Estándar: Mon-Sat 07:00-12:00, 13:00-16:30; Sun off.

## Schedule

| ID | WBS | Task | Type | Duration | Start | Finish | Predecessors | Total slack | Free slack | Constraint |
| --- | --- | --- | --- | --- | --- | --- | --- | --- | --- | --- |
| 1 | 1 | **DISEÑO, SUMINISTRO E INSTALACION DE DOMOS GEODESICOS Y REEMPLAZO DE IMPERMEABILIZACION DEL DIQUE DE TANQUES 51 Y 52 DE REFINERÍA CONCHÁN** |  | 165d | 2017-12-26 | 2018-06-25 |  | 0d |  |  |
| 2 | 1.1 | INICIO | milestone | 0d | 2017-12-26 | 2017-12-26 |  | 0d |  |  |
| 3 | 1.2 | **Dirección del Proyecto** |  | 17d | 2017-12-26 | 2018-01-13 |  | 0d |  |  |
| 4 | 1.2.1 | Acta de Constitución |  | 4d | 2017-12-26 | 2017-12-29 | 2 | 0d |  |  |
| 5 | 1.2.2 | **Plan de Dirección del Proyecto** |  | 17d | 2017-12-26 | 2018-01-13 |  | 0d |  |  |
| 6 | 1.2.2.1 | Plan de Gestión del Alcance |  | 4d | 2017-12-26 | 2017-12-29 | 4SS | 0d |  |  |
| 7 | 1.2.2.2 | Plan de Gestión de Requisitos |  | 4d | 2017-12-26 | 2017-12-29 | 6SS | 0d |  |  |
| 8 | 1.2.2.3 | Plan de Gestión de Cronograma |  | 7d | 2017-12-26 | 2018-01-02 | 7SS | 0d |  |  |
| 9 | 1.2.2.4 | Plan de Gestión de Costos |  | 7d | 2017-12-26 | 2018-01-02 | 8SS | 0d |  |  |
| 10 | 1.2.2.5 | Plan de Gestión de Calidad |  | 7d | 2017-12-26 | 2018-01-02 | 9SS | 0d |  |  |
| 11 | 1.2.2.6 | Plan de Gestión de Recursos |  | 5d | 2017-12-26 | 2017-12-30 | 10SS | 0d |  |  |
| 12 | 1.2.2.7 | Plan de Gestión de Comunicaciones |  | 5d | 2017-12-26 | 2017-12-30 | 11SS | 0d |  |  |
| 13 | 1.2.2.8 | Plan de Gestión de Riesgos |  | 4d | 2017-12-26 | 2017-12-29 | 12SS | 0d |  |  |
| 14 | 1.2.2.9 | Plan de Gestión de Adquisiciones |  | 5d | 2017-12-26 | 2017-12-30 | 13SS | 0d |  |  |
| 15 | 1.2.2.10 | Plan de Gestión de Interesados |  | 5d | 2017-12-26 | 2017-12-30 | 14SS | 0d |  |  |
| 16 | 1.2.2.11 | Línea Base del Alcance |  | 4d | 2017-12-26 | 2017-12-29 | 15SS | 0d |  |  |
| 17 | 1.2.2.12 | Línea Base del Cronograma |  | 4d | 2017-12-26 | 2017-12-29 | 16SS | 0d |  |  |
| 18 | 1.2.2.13 | Línea Base de Costos |  | 7d | 2017-12-26 | 2018-01-02 | 17SS | 0d |  |  |
| 19 | 1.2.2.14 | Plan de Dirección del Proyecto aprobada | milestone | 0d | 2018-01-13 | 2018-01-13 | 18FS+10d | 0d |  |  |
| 20 | 1.3 | **Ingeniería de Detalle** |  | 47d | 2018-01-13 | 2018-03-06 |  | 0d |  |  |
| 21 | 1.3.1 | Redondez y Verticalidad de Tanques Verificados |  | 10d | 2018-01-13 | 2018-01-24 | 19 | 0d |  | finish no earlier than 2018-01-05 |
| 22 | 1.3.2 | Diseño de Techo Domo |  | 30d | 2018-01-24 | 2018-02-26 | 21 | 0d |  |  |
| 23 | 1.3.3 | Diseño Civil |  | 30d | 2018-01-13 | 2018-02-15 | 19 | 106d | 0d |  |
| 24 | 1.3.4 | Diseño Metalmecànico de los Tanques |  | 15d | 2018-02-09 | 2018-02-26 | 22FF | 0d |  |  |
| 25 | 1.3.5 | ingenieria de detalle aprobada | milestone | 0d | 2018-03-06 | 2018-03-06 | 24FS+7d | 0d |  |  |

| ID | WBS | Task | Type | Duration | Start | Finish | Predecessors | Total slack | Free slack |
| --- | --- | --- | --- | --- | --- | --- | --- | --- | --- |
| 26 | 1.4 | **Procura** |  | 97d | 2018-02-15 | 2018-06-01 |  | 21d |  |
| 27 | 1.4.1 | **Nacional** |  | 12d | 2018-02-15 | 2018-02-28 |  | 106d |  |
| 28 | 1.4.1.1 | Geomembrana y geotextil puesto en obra |  | 2d | 2018-02-15 | 2018-02-17 | 23 | 106d | 0d |
| 29 | 1.4.1.2 | Afirmado puesto en obra |  | 2d | 2018-02-17 | 2018-02-20 | 28 | 106d | 0d |
| 30 | 1.4.1.3 | Asfalto en frío puesto en obra |  | 2d | 2018-02-20 | 2018-02-21 | 29 | 106d | 0d |
| 31 | 1.4.1.4 | Tubería 6" puesta en obra |  | 2d | 2018-02-22 | 2018-02-23 | 30 | 106d | 0d |
| 32 | 1.4.1.5 | Concreto premezclado puesto en obra |  | 2d | 2018-02-23 | 2018-02-26 | 31 | 106d | 0d |
| 33 | 1.4.1.6 | Acero corrugado puesto en obra |  | 2d | 2018-02-26 | 2018-02-28 | 32 | 106d | 0d |
| 34 | 1.4.1.7 | Material de procedencia nacional en obra | milestone | 0d | 2018-02-28 | 2018-02-28 | 33 | 106d |  |
| 35 | 1.4.2 | **Importación** |  | 80d | 2018-03-06 | 2018-06-01 |  | 21d |  |
| 36 | 1.4.2.1 | Dos techos domos puestos en obra |  | 80d | 2018-03-06 | 2018-06-01 | 25 | 21d | 0d |
| 37 | 1.4.2.2 | 12 cámaras de espuma puestas en obra |  | 50d | 2018-03-06 | 2018-04-30 | 36SS | 51d | 0d |
| 38 | 1.4.2.3 | 160 aspersores puestos en obra |  | 50d | 2018-03-06 | 2018-04-30 | 37FF | 51d | 0d |
| 39 | 1.4.2.4 | Material de importacion puesto en obra | milestone | 0d | 2018-04-30 | 2018-04-30 | 38 | 51d |  |
| 40 | 1.5 | **Trabajos Preliminares e Instalaciones Provicionales** |  | 64d | 2018-01-13 | 2018-03-24 |  | 84d |  |
| 41 | 1.5.1 | **Instalaciones Provicionales de Obra** |  | 5d | 2018-01-13 | 2018-01-18 |  | 143d |  |
| 42 | 1.5.1.1 | Instalar Oficina Provisional |  | 3d | 2018-01-13 | 2018-01-16 | 19 | 143d | 0d |
| 43 | 1.5.1.2 | Instalar Alamcèn |  | 5d | 2018-01-13 | 2018-01-18 | 42SS | 143d | 0d |
| 44 | 1.5.1.3 | Instalar Taller |  | 5d | 2018-01-13 | 2018-01-18 | 43SS | 143d | 0d |
| 45 | 1.5.1.4 | Instalar Suministros de Energìa , Agua |  | 3d | 2018-01-16 | 2018-01-18 | 44FF | 143d | 0d |
| 46 | 1.5.1.5 | instalaciones provisionales instaladas | milestone | 0d | 2018-01-18 | 2018-01-18 | 45 | 143d |  |
| 47 | 1.5.2 | **Tanques Ventilados** |  | 17d | 2018-03-06 | 2018-03-24 |  | 84d |  |
| 48 | 1.5.2.1 | Aperturar Tanques |  | 1d | 2018-03-06 | 2018-03-07 | 25 | 84d | 0d |
| 49 | 1.5.2.2 | Limpiar Tanques |  | 7d | 2018-03-07 | 2018-03-14 | 48 | 84d | 0d |
| 50 | 1.5.2.3 | Desgasificar Tanques |  | 9d | 2018-03-14 | 2018-03-24 | 49 | 84d | 0d |
| 51 | 1.5.2.4 | Permiso de trabajos en tanques aprobada | milestone | 0d | 2018-03-24 | 2018-03-24 | 50 | 84d |  |

| ID | WBS | Task | Type | Duration | Start | Finish | Predecessors | Total slack | Free slack |
| --- | --- | --- | --- | --- | --- | --- | --- | --- | --- |
| 52 | 1.6 | **Trabajos civiles** |  | 65d | 2018-03-06 | 2018-05-16 |  | 36d |  |
| 53 | 1.6.1 | Impermeabilización del Área Estanca Tanque 51 y 52 |  | 60d | 2018-03-06 | 2018-05-10 | 25 | 36d | 0d |
| 54 | 1.6.2 | Sistema de Drenaje Pluvial |  | 20d | 2018-04-19 | 2018-05-10 | 53FF | 36d | 0d |
| 55 | 1.6.3 | Bases para Escaleras y Pasarelas Construidas |  | 5d | 2018-05-10 | 2018-05-16 | 54 | 36d | 0d |
| 56 | 1.6.4 | trabajos civiles concluidos | milestone | 0d | 2018-05-16 | 2018-05-16 | 55 | 36d |  |
| 57 | 1.7 | **Trabajos Mecánicos** |  | 101d | 2018-03-06 | 2018-06-25 |  | 0d |  |
| 58 | 1.7.1 | Tanque 52 |  | 50d | 2018-03-06 | 2018-04-30 | 25 | 0d |  |
| 59 | 1.7.2 | Tanque 51 |  | 50d | 2018-04-30 | 2018-06-23 | 58 | 0d |  |
| 60 | 1.7.3 | Documentos de cierre del proyecto |  | 1d | 2018-06-23 | 2018-06-25 | 59 | 0d |  |
| 61 | 1.7.4 | FIN | milestone | 0d | 2018-06-25 | 2018-06-25 | 60 | 0d |  |
